# CGEMS

Schedule from MS Project, 2006-04-04 to 2006-09-15, A marks actual dates.
SAIC

## Calendars

- Standard: Mon-Fri 08:00-12:00, 13:00-17:00; Sat-Sun off.

## Resources

| Resource |
| --- |
| JiangHo |
| GuruswamiS |
| SahniH |
| NCICB |
| NCICB/CGEMS team |
| LongY |
| BasuA |

## Schedule

| ID | WBS | Task | Type | Duration | Start | Finish | Predecessors | Complete | Remaining | Total slack | Free slack | Constraint | Resources | Work | Actual work |
| --- | --- | --- | --- | --- | --- | --- | --- | --- | --- | --- | --- | --- | --- | --- | --- |
| 1 | 1 | **CGEMS 1.0 Release** |  | 119d | 2006-04-04 A | 2006-09-15 |  | 3% | 115.17d | 0d |  |  |  | 2136h | 50.4h |
| 2 | 1.1 | **Project Management and Control** |  | 80d | 2006-05-29 | 2006-09-15 |  |  |  | 0d |  |  |  | 1280h |  |
| 3 | 1.1.1 | Project Management |  | 80d | 2006-05-29 | 2006-09-15 |  |  |  | 0d |  | must finish on 2006-09-15 | GuruswamiS | 640h |  |
| 4 | 1.1.2 | Project Control |  | 80d | 2006-05-29 | 2006-09-15 |  |  |  | 0d |  | finish no earlier than 2006-09-15 | GuruswamiS | 640h |  |
| 5 | 1.2 | **Inception Phase** |  | 56d | 2006-04-04 A | 2006-06-20 |  | 3% | 54.11d | 63d |  |  |  | 528h |  |
| 6 | 1.2.1 | **Requirements Gathering** |  | 51d | 2006-04-04 | 2006-06-13 |  |  |  | 58.75d |  |  |  | 328h |  |
| 7 | 1.2.1.1 | NCICB/CGEMS team |  | 8w | 2006-04-04 | 2006-05-29 |  |  |  | 68.75d | 10d | start no earlier than 2006-04-04 | NCICB/CGEMS team | 320h |  |
| 8 | 1.2.1.2 | Determine Basic Use Cases |  | 8w | 2006-04-04 | 2006-05-29 |  |  |  | 68.75d | 10d | start no earlier than 2006-04-04 |  |  |  |
| 9 | 1.2.1.3 | Prioritize Use Cases |  | 1d | 2006-06-13 | 2006-06-13 | 7, 8 |  |  | 58.75d | 0d | start no earlier than 2006-06-13 | NCICB | 8h |  |
| 10 | 1.2.2 | **Documentation** |  | 12d | 2006-06-05 A | 2006-06-20 |  | 13% | 10.5d | 63d |  |  |  | 200h |  |
| 11 | 1.2.2.1 | Draft Project Plan |  | 5d | 2006-06-05 | 2006-06-09 |  |  |  | 70d |  | start no earlier than 2006-06-05 | GuruswamiS | 40h |  |
| 12 | 1.2.2.2 | Draft Requirements Specification Document |  | 5d | 2006-06-14 A | 2006-06-20 | 9 | 75% | 1.25d | 55d | 0d |  |  |  |  |
| 13 | 1.2.2.3 | Draft Test Plan |  | 10d | 2006-06-05 | 2006-06-16 |  |  |  | 65d |  |  | LongY | 80h |  |
| 14 | 1.2.2.4 | Draft Test Cases |  | 10d | 2006-06-05 | 2006-06-16 |  |  |  | 65d |  |  | LongY | 80h |  |
| 15 | 1.2.3 | Milestone: General Requirements Captured & Priortized | milestone | 0d | 2006-06-20 | 2006-06-20 | 12 |  |  | 63d |  |  |  |  |  |
| 16 | 1.3 | **Elaboration Phase** |  | 34d | 2006-06-12 A | 2006-07-27 |  | 42% | 19.72d | 36d |  |  |  | 120h | 50.4h |
| 17 | 1.3.1 | **Architecture** |  | 8d | 2006-06-21 | 2006-06-30 |  |  |  | 55d |  |  |  | 64h |  |
| 18 | 1.3.1.1 | Initial Draft of Architecture |  | 1w | 2006-06-21 | 2006-06-27 | 12 |  |  | 55d | 0d |  | SahniH | 40h |  |
| 19 | 1.3.1.2 | Internal review with caIntegrator Team | milestone | 0d | 2006-06-27 | 2006-06-27 | 18 |  |  | 55d | 0d |  | SahniH |  |  |
| 20 | 1.3.1.3 | Incorporate Comments/Feedback from the team review |  | 1d | 2006-06-28 | 2006-06-28 | 19 |  |  | 55d | 0d |  | SahniH | 8h |  |
| 21 | 1.3.1.4 | Review architecture with the "Review Board" | milestone | 0d | 2006-06-28 | 2006-06-28 | 20 |  |  | 55d | 0d | start no earlier than 2005-06-01 | SahniH |  |  |
| 22 | 1.3.1.5 | Draft design document (caBIG template) |  | 0.4w | 2006-06-29 | 2006-06-30 | 21 |  |  | 55d | 0d |  | SahniH | 16h |  |
| 23 | 1.3.1.6 | Milestone: Completed Design document | milestone | 0d | 2006-06-30 | 2006-06-30 | 22 |  |  | 55d |  |  | BasuA |  |  |
| 24 | 1.3.2 | **Itreration 1: Generate caCORE-SDK API** |  | 25d | 2006-06-12 A | 2006-07-14 |  | 90% | 2.5d | 19d | 0d |  |  | 56h | 50.4h |
| 25 | 1.3.2.1 | Harmonize CGEMS UML model with caIntegrator |  | 7d | 2006-06-12 A | 2006-06-20 |  | 90% | 0.7d | 0d |  | finish no earlier than 2006-06-20 |  | 56h | 50.4h |
| 26 | 1.3.2.2 | Harmozine CGEMS OM with CG-OM |  | 7d | 2006-06-12 A | 2006-06-21 | 25 | 90% | 0.7d | 36.3d |  | start no earlier than 2006-06-12 | SahniH | 56h | 50.4h |
| 27 | 1.3.2.5 | MileStone: Finalize model with CGEMS stake holders | milestone | 0d | 2006-06-22 | 2006-06-22 |  |  |  | 0d |  |  |  |  |  |
| 28 | 1.3.2.4 | MileStone: Finalize CG-OM w/CGEMS model | milestone | 0d | 2006-06-22 | 2006-06-22 | 27 |  |  | 35d |  |  | SahniH |  |  |
| 29 | 1.3.2.10 | Database design and implementation |  | 7d | 2006-06-21 | 2006-06-29 |  |  |  | 30d | 0d |  |  | 104h |  |
| 30 | 1.3.2.6 | MileStone: Dev database ready | milestone | 0d | 2006-06-29 | 2006-06-29 | 29 |  |  | 30d |  |  | JiangHo |  |  |
| 31 | 1.3.2.8 | Generate API using caCORE-SDK |  | 18d | 2006-06-21 | 2006-07-14 |  |  |  | 19d | 0d |  |  | 144h |  |
| 32 | 1.3.2.8 | MileStone: Generate API using caCORE SDK | milestone | 0d | 2006-07-14 | 2006-07-14 | 31 |  |  | 19d |  |  | GuruswamiS |  |  |

| ID | WBS | Task | Type | Duration | Start | Finish | Predecessors | Total slack | Free slack | Constraint | Resources | Work |
| --- | --- | --- | --- | --- | --- | --- | --- | --- | --- | --- | --- | --- |
| 33 | 1.3.3 | **Iteration 1b: Middle-tier implementation** |  | 0d | 2006-07-27 | 2006-07-27 |  | 36d |  |  |  |  |
| 34 | 1.3.2.12 | Middle-tier implementation |  | 25d | 2006-06-23 | 2006-07-27 |  | 0d |  |  |  | 200h |
| 35 | 1.3.3.2 | MileStone: Completed middle-tier implementation | milestone | 0d | 2006-07-27 | 2006-07-27 | 34 | 36d |  |  |  |  |
| 36 | 1.4 | Milestone: Demo caCORE and DTO APIs using Test Data Sets | milestone | 0d | 2006-07-14 | 2006-07-14 | 24 | 45d |  |  |  |  |
| 37 | 1.5 | **Transition Phase** |  | 21d | 2006-07-17 | 2006-08-14 | 24 | 19d |  |  |  | 208h |
| 38 | 1.5.1 | **QA** |  | 5d | 2006-07-17 | 2006-07-21 |  | 19d | 0d |  |  | 80h |
| 39 | 1.5.1.1 | Finalize Testplan |  | 5d | 2006-07-17 | 2006-07-21 |  | 19d |  |  | LongY | 40h |
| 40 | 1.5.1.2 | Finalize Test Cases |  | 5d | 2006-07-17 | 2006-07-21 |  | 19d |  |  | LongY | 40h |
| 41 | 1.5.2 | **Deploy** |  | 16d | 2006-07-24 | 2006-08-14 | 38 | 19d |  |  |  | 128h |
| 42 | 1.5.2.1 | **QA Server Deployment** |  | 10d | 2006-07-24 | 2006-08-04 |  | 19d |  |  |  | 80h |
| 43 | 1.5.2.1.1 | QA Testing |  | 10d | 2006-07-24 | 2006-08-04 |  | 19d | 0d | start no earlier than 2005-06-28 | LongY | 80h |
| 44 | 1.5.2.2 | **Staging Server Deployment** |  | 5d | 2006-08-07 | 2006-08-11 |  | 24d |  |  |  | 40h |
| 45 | 1.5.2.2.1 | Staging Testing |  | 5d | 2006-08-07 | 2006-08-11 | 43 | 24d | 0d |  | LongY | 40h |
| 46 | 1.5.2.3 | **Production Server Deployment** |  | 1d | 2006-08-14 | 2006-08-14 |  | 24d |  |  |  | 8h |
| 47 | 1.5.2.3.1 | Production Verification |  | 1d | 2006-08-14 | 2006-08-14 | 45 | 24d |  | start no earlier than 2005-06-13 | LongY | 8h |
