# ISPY

Schedule from MS Project, 2006-03-28 to 2006-12-15, A marks actual dates.
NCI

## Calendars

- Standard: Mon-Fri 08:00-12:00, 13:00-17:00; Sat-Sun off.

## Resources

| Resource |
| --- |
| JiangHo |
| GuruswamiS |
| ZhangD |
| NCICB |
| MadhavaS |
| GeorgeDa |
| LiuH |
| LandyR |
| RossoK |
| HarrisMA |
| LongY |
| QA |
| Systems |
| WuYe |

## Schedule

| ID | WBS | Task | Type | Duration | Start | Finish | Predecessors | Complete | Remaining | Total slack | Free slack | Constraint | Resources | Work | Actual work |
| --- | --- | --- | --- | --- | --- | --- | --- | --- | --- | --- | --- | --- | --- | --- | --- |
| 1 | 1 | **ISPY Analysis portal** |  | 188.42d? | 2006-03-28 A | 2006-12-15 |  | 27% | 136.72d? | 0d |  |  |  | 3423.6h | 1114h |
| 2 | 1.1 | **Project Management and Control** |  | 50d | 2006-03-28 | 2006-06-05 |  |  |  | 138.42d |  |  |  | 800h |  |
| 3 | 1.1.1 | Project Management |  | 50d | 2006-03-28 | 2006-06-05 |  |  |  | 137.24d |  | start no earlier than 2006-03-28 | GuruswamiS | 400h |  |
| 4 | 1.1.2 | Project Control |  | 50d | 2006-03-28 | 2006-06-05 |  |  |  | 137.24d |  | finish no earlier than 2006-06-05 | GuruswamiS | 400h |  |
| 5 | 1.2 | **Inception Phase** |  | 50d | 2006-03-28 A | 2006-06-05 |  | 34% | 32.86d | 138.42d |  |  |  | 210h | 76.8h |
| 6 | 1.2.1 | **Requirements Gathering** |  | 50d | 2006-03-28 A | 2006-06-05 |  | 34% | 32.86d | 138.42d |  |  |  | 210h | 76.8h |
| 7 | 1.2.1.1 | Determine General Requirements |  | 1d | 2006-03-28 A | 2006-03-28 A |  | 100% |  |  |  | start no earlier than 2006-03-28 | HarrisMA | 8h | 8h |
| 8 | 1.2.1.2 | Determine Basic Use Cases |  | 1d | 2006-03-29 A | 2006-03-29 A | 7 | 100% |  |  |  | start no earlier than 2006-03-28 | HarrisMA | 8h | 8h |
| 9 | 1.2.1.3 | Prioritize Use Cases |  | 1d | 2006-03-30 A | 2006-03-30 A | 7, 8 | 100% |  |  |  |  | HarrisMA | 8h | 8h |
| 10 | 1.2.1.4 | Milestone: General Requirements Captured | milestone | 0d | 2006-03-31 A | 2006-03-31 A | 9 | 100% |  |  |  |  |  |  |  |
| 11 | 1.2.1.5 | **Documentation** |  | 44d | 2006-04-05 A | 2006-06-05 |  | 26% | 32.38d | 138.42d |  |  |  | 186h | 52.8h |
| 12 | 1.2.1.5.1 | Draft Project Plan |  | 2d | 2006-04-05 A | 2006-04-06 A |  | 100% |  |  |  | start no earlier than 2006-04-05 | GuruswamiS | 16h | 16h |
| 13 | 1.2.1.5.2 | Add Feature Requests/Bugs into TestTrack |  | 2d | 2006-05-10 | 2006-05-11 |  |  |  | 154.24d |  |  | LongY [50%] | 2h |  |
| 14 | 1.2.1.5.3 | Draft Requirements Specification Document |  | 3d | 2006-05-12 A | 2006-05-16 A | 13 | 100% |  |  |  |  | HarrisMA | 24h | 24h |
| 15 | 1.2.1.5.4 | Draft Design Document |  | 4d | 2006-05-17 A | 2006-05-22 | 14 | 40% | 2.4d | 148.42d |  |  | HarrisMA | 32h | 12.8h |
| 16 | 1.2.1.5.5 | Draft Test Plan |  | 4d | 2006-05-17 | 2006-05-22 | 14 |  |  | 137.24d | 0d |  | LongY | 32h |  |
| 17 | 1.2.1.5.6 | Draft Test Cases |  | 10d | 2006-05-23 | 2006-06-05 | 16 |  |  | 137.24d |  |  | LiuH | 80h |  |
| 18 | 1.3 | **Data Update Cycle** |  | 1d? | 2006-05-10 | 2006-05-10 |  |  |  | 156.42d |  |  |  |  |  |
| 19 | 1.3.1 | Data Refresh 1 |  | 1d? | 2006-05-10 | 2006-05-10 |  |  |  | 155.24d |  |  |  |  |  |
| 20 | 1.3.2 | Data Refresh 2 |  | 1d? | 2006-05-10 | 2006-05-10 |  |  |  | 155.24d |  |  |  |  |  |
| 21 | 1.4 | **Evolution Cycle (June release) : Elaboration & Construction** |  | 42d | 2006-04-21 A | 2006-06-19 |  | 91% | 3.69d | 0d |  |  |  | 824h | 763.2h |
| 22 | 1.4.1 | **Iteration 1** |  | 29d | 2006-04-21 A | 2006-05-31 A |  | 100% |  |  |  |  |  | 632h | 632h |
| 23 | 1.4.1.1 | **ID Mapper Functionality** |  | 11d | 2006-05-10 A | 2006-05-24 A |  | 100% |  |  |  |  |  | 144h | 144h |
| 24 | 1.4.1.1.1 | Create ID Mapping Service |  | 5d | 2006-05-11 A | 2006-05-17 A | 25 | 100% |  |  |  |  | HarrisMA | 40h | 40h |
| 25 | 1.4.1.1.2 | Define ID Mapping File Format and create sample |  | 1d | 2006-05-10 A | 2006-05-10 A |  | 100% |  |  |  |  | JiangHo; HarrisMA | 16h | 16h |
| 26 | 1.4.1.1.3 | Create ID Mapping Data File |  | 2d | 2006-05-11 A | 2006-05-12 A | 25 | 100% |  |  |  |  | JiangHo; LiuH | 32h | 32h |
| 27 | 1.4.1.1.4 | Create ID Mapping GUI wireframe |  | 2d | 2006-05-10 A | 2006-05-11 A |  | 100% |  |  |  |  | LandyR | 16h | 16h |
| 28 | 1.4.1.1.5 | Create ID Mapping UI |  | 5d | 2006-05-18 A | 2006-05-24 A | 24 | 100% |  |  |  |  | LandyR | 40h | 40h |

| ID | WBS | Task | Type | Duration | Start | Finish | Predecessors | Complete | Remaining | Total slack | Free slack | Constraint | Resources | Work | Actual work |
| --- | --- | --- | --- | --- | --- | --- | --- | --- | --- | --- | --- | --- | --- | --- | --- |
| 29 | 1.4.1.2 | **User List Management Functionality** |  | 15d | 2006-05-10 A | 2006-05-30 A |  | 100% |  |  |  |  |  | 280h | 280h |
| 30 | 1.4.1.2.1 | Create wireframes for list management GUI |  | 3d | 2006-05-10 A | 2006-05-12 A |  | 100% |  |  |  |  | RossoK; LandyR | 48h | 48h |
| 31 | 1.4.1.2.2 | Implement List Management GUI |  | 12d | 2006-05-15 A | 2006-05-30 A | 30 | 100% |  |  |  | start no earlier than 2006-04-20 | RossoK; LandyR | 192h | 192h |
| 32 | 1.4.1.2.3 | Integrate List management into the application |  | 2.5d | 2006-05-18 A | 2006-05-22 A | 24 | 100% |  |  |  | start no earlier than 2006-04-24 | HarrisMA; RossoK | 40h | 40h |
| 33 | 1.4.1.3 | **Incorporate CDNA in High Order Analysis** |  | 29d | 2006-04-21 A | 2006-05-31 A |  | 100% |  |  |  |  |  | 176h | 176h |
| 34 | 1.4.1.3.1 | create sample CDNA R data file |  | 1d | 2006-04-21 A | 2006-04-21 A |  | 100% |  |  |  | start no earlier than 2006-04-21 | LiuH | 8h | 8h |
| 35 | 1.4.1.3.2 | QA CDNA data |  | 5d | 2006-05-10 A | 2006-05-16 A |  | 100% |  |  |  |  | LiuH | 40h | 40h |
| 36 | 1.4.1.3.3 | Develop SOP for CDNA data normalization |  | 2d | 2006-05-10 A | 2006-05-11 A |  | 100% |  |  |  |  | LiuH | 16h | 16h |
| 37 | 1.4.1.3.4 | Normalize CDNA samples |  | 10d | 2006-05-17 A | 2006-05-30 A | 35, 36 | 100% |  |  |  | start no earlier than 2006-05-01 | LiuH | 80h | 80h |
| 38 | 1.4.1.3.5 | Create Final CDNA R data file |  | 1d | 2006-05-31 A | 2006-05-31 A | 37 | 100% |  |  |  |  | LiuH | 8h | 8h |
| 39 | 1.4.1.3.6 | Create CDNA annotation file |  | 3d | 2006-05-10 A | 2006-05-12 A |  | 100% |  |  |  |  | JiangHo | 24h | 24h |
| 40 | 1.4.1.4 | **Test** |  | 4d | 2006-05-10 A | 2006-05-16 A |  | 100% |  |  |  |  |  | 32h | 32h |
| 41 | 1.4.1.4.1 | Unit Test |  | 4d | 2006-05-10 A | 2006-05-15 A |  | 100% |  |  |  |  | LongY | 32h | 32h |
| 42 | 1.4.1.4.2 | Integration Test (Dev) | milestone | 0d | 2006-05-16 A | 2006-05-16 A | 41 | 100% |  |  |  |  | LiuH |  |  |
| 43 | 1.4.1.5 | Milestone: Test Fixes on Dev | milestone | 0d | 2006-05-17 A | 2006-05-17 A | 40 | 100% |  |  |  |  |  |  |  |
| 44 | 1.4.2 | **Iteration 2** |  | 23d | 2006-05-03 A | 2006-06-02 |  | 86% | 3.29d | 6.6d | 0d |  |  | 80h | 64h |
| 45 | 1.4.2.1 | **Clinical Data modification** |  | 4d | 2006-05-03 A | 2006-05-08 A |  | 100% |  |  |  |  |  | 32h | 32h |
| 46 | 1.4.2.1.1 | Update clinical data file with new columns |  | 2d | 2006-05-03 A | 2006-05-04 A |  | 100% |  |  |  | start no earlier than 2006-05-03 | JiangHo | 16h | 16h |
| 47 | 1.4.2.1.2 | Modify clinical data parser to support new columns |  | 1d | 2006-05-05 A | 2006-05-05 A | 46 | 100% |  |  |  |  | HarrisMA | 8h | 8h |
| 48 | 1.4.2.1.3 | Modify clinical report (PCA and HC) to handle new columns |  | 1d | 2006-05-08 A | 2006-05-08 A | 47 | 100% |  |  |  |  | LandyR | 8h | 8h |
| 49 | 1.4.2.2 | **General Tasks** |  | 11.25d | 2006-05-10 A | 2006-05-25 A |  | 100% |  |  |  |  |  | 24h | 24h |
| 50 | 1.4.2.2.1 | Externalize data files |  | 1d | 2006-05-23 A | 2006-05-23 A |  | 100% |  |  |  |  | HarrisMA | 8h | 8h |
| 51 | 1.4.2.2.2 | Externalize Properties |  | 2d | 2006-05-10 A | 2006-05-25 A | 50 | 100% |  |  |  |  | HarrisMA | 16h | 16h |
| 52 | 1.4.2.3 | **Test** |  | 5d | 2006-05-25 A | 2006-06-01 A | 49, 45 | 100% |  |  |  |  |  | 8h | 8h |
| 53 | 1.4.2.3.1 | Unit Test |  | 4d | 2006-05-25 A | 2006-05-31 A |  | 100% |  |  |  |  |  |  |  |
| 54 | 1.4.2.3.2 | Integration Test (Dev) |  | 1d | 2006-05-31 A | 2006-06-01 A | 53 | 100% |  |  |  |  | LiuH | 8h | 8h |
| 55 | 1.4.2.3.3 | Milestone: Test Fixes on Dev | milestone | 0d | 2006-06-01 A | 2006-06-01 A | 54 | 100% |  |  |  |  | LiuH |  |  |
| 56 | 1.4.2.4 | Update design spec. |  | 2d | 2006-06-01 | 2006-06-02 | 22 |  |  | 6.6d |  |  | HarrisMA | 16h |  |

| ID | WBS | Task | Type | Duration | Start | Finish | Predecessors | Complete | Remaining | Total slack | Constraint | Resources | Work | Actual work |
| --- | --- | --- | --- | --- | --- | --- | --- | --- | --- | --- | --- | --- | --- | --- |
| 57 | 1.4.3 | **Transition** |  | 11d | 2006-06-05 A | 2006-06-19 | 44 | 60% | 4.4d | 0d |  |  | 112h | 67.2h |
| 58 | 1.4.3.1 | **Testing and Deployment** |  | 3d | 2006-06-05 A | 2006-06-07 |  | 97% | 0.1d | 8d |  |  | 24h | 23.2h |
| 59 | 1.4.3.1.1 | Modify deployment scripts |  | 1d | 2006-06-05 A | 2006-06-05 A |  | 100% |  |  |  | HarrisMA | 8h | 8h |
| 60 | 1.4.3.1.2 | Testing |  | 2d | 2006-06-06 A | 2006-06-07 | 59 | 95% | 0.1d | 8d |  | LongY | 16h | 15.2h |
| 61 | 1.4.3.2 | **Deployment** |  | 11d | 2006-06-05 A | 2006-06-19 |  | 50% | 5.5d | 0d |  |  | 88h | 44h |
| 62 | 1.4.3.2.1 | Deployment to QA |  | 1d | 2006-06-05 A | 2006-06-05 A | 23, 29, 33, 44 | 100% |  |  |  | QA | 8h | 8h |
| 63 | 1.4.3.2.2 | QA Testing |  | 5d | 2006-06-06 A | 2006-06-12 | 62 | 90% | 0.5d | 0d |  | LongY | 40h | 36h |
| 64 | 1.4.3.2.3 | Deployment to Staging |  | 2d | 2006-06-13 | 2006-06-14 | 63 |  |  | 0d |  | Systems | 16h |  |
| 65 | 1.4.3.2.4 | Staging Testing |  | 3d | 2006-06-15 | 2006-06-19 | 64 |  |  | 0d |  | LongY | 24h |  |
| 66 | 1.5 | **Evolution Cycle (1.0 Release Elaboration & Construction)** |  | 128.42d | 2006-06-20 A | 2006-12-15 | 21 | 14% | 110.75d | 0d |  |  | 1589.6h | 274h |
| 67 | 1.5.1 | Draft Project Plan |  | 2d | 2006-06-20 A | 2006-07-04 A |  | 100% |  |  |  | HarrisMA | 16h | 16h |
| 68 | 1.5.2 | **Iteration 1 - Use cases and Documentation** |  | 39.75d | 2006-06-20 A | 2006-08-14 |  | 72% | 11.24d | 0d |  |  | 320h | 258h |
| 69 | 1.5.2.1 | **Requirements Gathering** |  | 19d | 2006-06-20 A | 2006-07-17 |  | 92% | 1.58d | 20.75d |  |  | 144h | 128h |
| 70 | 1.5.2.1.1 | Determine General Requirements |  | 4d | 2006-06-20 A | 2006-06-23 A | 21 | 100% |  |  | start no earlier than 2006-06-05 | HarrisMA | 32h | 32h |
| 71 | 1.5.2.1.2 | Draft Wireframes |  | 4d | 2006-06-27 A | 2006-06-30 | 70 | 75% | 1d | 30.75d |  | LandyR; RossoK | 64h | 48h |
| 72 | 1.5.2.1.3 | Determine Basic Use Cases |  | 2d | 2006-07-03 A | 2006-07-04 A | 71 | 100% |  |  | start no earlier than 2006-06-05 | HarrisMA | 16h | 16h |
| 73 | 1.5.2.1.4 | MileStone: Completed Requirements specification | milestone | 0d | 2006-06-30 A | 2006-06-30 A | 71 | 100% |  |  |  |  |  |  |
| 74 | 1.5.2.1.5 | Determine backend data needs. |  | 2d | 2006-07-13 A | 2006-07-17 A | 70 | 100% |  |  |  | HarrisMA; RossoK | 32h | 32h |
| 75 | 1.5.2.2 | **Documentation** |  | 23.75d | 2006-07-03 A | 2006-08-03 |  | 33% | 15.99d | 7d |  |  | 72h | 34h |
| 76 | 1.5.2.2.1 | Draft Scope Document |  | 2d | 2006-07-03 A | 2006-07-05 A |  | 100% |  |  | start no earlier than 2006-06-26 | HarrisMA | 16h | 16h |
| 77 | 1.5.2.2.2 | Draft Usecase documents |  | 3d | 2006-07-12 A | 2006-07-17 | 72 | 75% | 0.75d | 0d |  | HarrisMA | 24h | 18h |
| 78 | 1.5.2.2.3 | Draft Design Document |  | 8d | 2006-07-24 | 2006-08-03 | 77FS+5d |  |  | 0d |  | HarrisMA [50%] | 32h |  |
| 79 | 1.5.2.2.4 | Milestone: Completed Design document | milestone | 0d | 2006-08-03 | 2006-08-03 | 78 |  |  | 7d |  |  |  |  |
| 80 | 1.5.2.3 | Define Interfaces for front to middle tier communication |  | 1w | 2006-07-10 A | 2006-07-17 A | 74 | 100% |  |  |  | GeorgeDa | 40h | 40h |

| ID | WBS | Task | Type | Duration | Start | Finish | Predecessors | Complete | Remaining | Total slack | Constraint | Resources | Work | Actual work |
| --- | --- | --- | --- | --- | --- | --- | --- | --- | --- | --- | --- | --- | --- | --- |
| 81 | 1.5.2.4 | **Implement Clinical Query GUI using file based service** |  | 7d | 2006-08-03 A | 2006-08-14 | 78 | 88% | 0.88d | 0d |  |  | 64h | 56h |
| 82 | 1.5.2.4.1 | Modify file based clinical service to support GUI development |  | 1d | 2006-08-03 | 2006-08-04 |  |  |  | 6d | start no earlier than 2006-07-05 | HarrisMA | 8h |  |
| 83 | 1.5.2.4.2 | Implement Clinical Query GUI and report |  | 7d | 2006-08-03 A | 2006-08-14 A |  | 100% |  |  | start no earlier than 2006-07-11 | RossoK | 56h | 56h |
| 84 | 1.5.3 | **Iteration 2a - Integration with NCIA** |  | 32d | 2006-08-14 | 2006-09-27 | 68 |  |  | 0d |  |  | 193.6h |  |
| 85 | 1.5.3.1 | **Requirements Gathering** |  | 7d | 2006-08-14 | 2006-08-23 |  |  |  | 0d |  |  | 16.8h |  |
| 86 | 1.5.3.1.1 | Determine General Requirements |  | 3d | 2006-08-14 | 2006-08-17 |  |  |  | 0d | start no earlier than 2006-06-05 | GeorgeDa [30%] | 7.2h |  |
| 87 | 1.5.3.1.2 | Determine use of CSM / LDAP |  | 1d | 2006-08-17 | 2006-08-18 | 86 |  |  | 0d |  | GeorgeDa [30%] | 2.4h |  |
| 88 | 1.5.3.1.3 | Determine Basic Use Cases |  | 3d | 2006-08-18 | 2006-08-23 | 87 |  |  | 0d | start no earlier than 2006-06-05 | GeorgeDa [30%] | 7.2h |  |
| 89 | 1.5.3.1.4 | MileStone: Completed Requirements specification | milestone | 0d | 2006-08-23 | 2006-08-23 | 86, 88 |  |  | 0d | start no earlier than 2006-06-05 |  |  |  |
| 90 | 1.5.3.2 | **Design** |  | 5d | 2006-08-23 | 2006-08-30 | 85 |  |  | 0d |  |  | 32.8h |  |
| 91 | 1.5.3.2.1 | Design method for mapping ids from ISPY to NCIA |  | 1w | 2006-08-23 | 2006-08-30 |  |  |  | 0d |  | GeorgeDa [30%] | 12h |  |
| 92 | 1.5.3.2.2 | Design method to display text annotation along with images |  | 2d | 2006-08-23 | 2006-08-25 |  |  |  | 3d |  | GeorgeDa [30%]; RossoK | 20.8h |  |
| 93 | 1.5.3.3 | **Data Submission to NCIA system** |  | 12d | 2006-08-14 | 2006-08-30 |  |  |  | 0d |  |  |  |  |
| 94 | 1.5.3.3.1 | Milestone: receive ISPY image data | milestone | 0d | 2006-08-30 | 2006-08-30 | 90 |  |  | 0d |  | MadhavaS |  |  |
| 95 | 1.5.3.3.2 | Milestone: Images available in the NCIA system | milestone | 0d | 2006-08-14 | 2006-08-14 |  |  |  | 12d |  | NCICB |  |  |
| 96 | 1.5.3.4 | **Implementation** |  | 6d | 2006-08-30 | 2006-09-07 | 93 |  |  | 0d |  |  | 72h |  |
| 97 | 1.5.3.4.1 | Milestone: NICA system has linkin capability | milestone | 0d | 2006-08-30 | 2006-08-30 |  |  |  | 3d |  | NCICB |  |  |
| 98 | 1.5.3.4.2 | Implement deep links into NCIA system modifying the clinical report |  | 3d | 2006-09-04 | 2006-09-07 | 97, 99 |  |  | 0d |  | GeorgeDa; RossoK | 48h |  |
| 99 | 1.5.3.4.3 | Implement CSM/LDAP authentication |  | 3d | 2006-08-30 | 2006-09-04 |  |  |  | 0d |  | GeorgeDa | 24h |  |
| 100 | 1.5.3.4.4 | Milestone: Completed Design document | milestone | 0d | 2006-08-30 | 2006-08-30 |  |  |  | 6d |  |  |  |  |
| 101 | 1.5.3.5 | **Test** |  | 14d | 2006-09-07 | 2006-09-27 | 96 |  |  | 0d |  |  | 72h |  |
| 102 | 1.5.3.5.1 | Unit Test |  | 4d | 2006-09-07 | 2006-09-13 |  |  |  | 0d |  | HarrisMA | 32h |  |
| 103 | 1.5.3.5.2 | Integration Test (Dev) |  | 10d | 2006-09-13 | 2006-09-27 | 102 |  |  | 0d |  | LongY | 40h |  |
| 104 | 1.5.3.5.3 | Milestone: Test Fixes on Dev | milestone | 0d | 2006-09-27 | 2006-09-27 | 103 |  |  | 0d |  |  |  |  |

| ID | WBS | Task | Type | Duration | Start | Finish | Predecessors | Complete | Total slack | Free slack | Resources | Work | Actual work |
| --- | --- | --- | --- | --- | --- | --- | --- | --- | --- | --- | --- | --- | --- |
| 105 | 1.5.4 | **Iteration 2b - Prototype design & implementation of the Integrated Data displays** |  | 16d | 2006-06-20 | 2006-07-11 |  |  | 112.42d |  |  | 156h |  |
| 106 | 1.5.4.1 | **Correlation Displays** |  | 16d | 2006-06-20 | 2006-07-11 |  |  | 112.42d |  |  | 156h |  |
| 107 | 1.5.4.1.1 | Design/Prototype of analyis server enhancement to support correlation |  | 1w | 2006-07-05 | 2006-07-11 | 76 |  | 111.24d |  | HarrisMA [50%]; LiuH | 60h |  |
| 108 | 1.5.4.1.2 | GUI display of correlation |  | 3w | 2006-06-20 | 2006-07-10 |  |  | 112.24d |  | HarrisMA [50%]; RossoK [30%] | 96h |  |
| 109 | 1.5.5 | **Iteration 3 - Individual Data Type Query and Retrieval** |  | 26d | 2006-09-27 | 2006-11-02 | 84 |  | 0d |  |  | 576h |  |
| 110 | 1.5.5.1 | **Refactor App from Evolution Cycle (June release) to use new backend** |  | 10d | 2006-09-27 | 2006-10-11 |  |  | 16d |  |  | 80h |  |
| 111 | 1.5.5.1.1 | Convert file based annotation to use db |  | 4d | 2006-09-27 | 2006-10-03 |  |  | 16d | 0d | GeorgeDa | 32h |  |
| 112 | 1.5.5.1.2 | Convert ID lookup to use db |  | 3d | 2006-10-03 | 2006-10-06 | 111 |  | 16d | 0d | GeorgeDa | 24h |  |
| 113 | 1.5.5.1.3 | Convert clinical file based calls to use clinical object model |  | 3d | 2006-10-06 | 2006-10-11 | 112 |  | 16d |  | GeorgeDa | 24h |  |
| 114 | 1.5.5.2 | **Implement ID lookup in database** |  | 5d | 2006-09-27 | 2006-10-04 |  |  | 21d |  |  | 40h |  |
| 115 | 1.5.5.2.1 | populate tables |  | 2d | 2006-09-27 | 2006-09-29 |  |  | 21d | 0d | JiangHo | 16h |  |
| 116 | 1.5.5.2.2 | develop middle tier and backend code |  | 3d | 2006-09-29 | 2006-10-04 | 115 |  | 21d |  | ZhangD | 24h |  |
| 117 | 1.5.5.3 | **Implement Clinical Query Functionality** |  | 4d | 2006-09-27 | 2006-10-03 |  |  | 0d |  |  | 32h |  |
| 118 | 1.3.3.2 | CG - Model with I-SPY Finding Pkgs |  | 16d | 2006-06-27 A | 2006-07-18 A |  | 100% |  |  |  | 128h | 128h |
| 119 | 1.5.5.3.2 | Milestone: Clinical Object Model Supports Clinical Queries | milestone | 0d | 2006-09-27 | 2006-09-27 | 118 |  | 4d |  |  |  |  |
| 120 | 1.5.5.3.3 | Implement Middle Tier code to support Clinical Queries |  | 4d | 2006-09-27 | 2006-10-03 |  |  | 0d |  | GeorgeDa [50%] | 16h |  |
| 121 | 1.5.5.3.4 | Populate Clinical Database tables |  | 2d | 2006-09-27 | 2006-09-29 |  |  | 2d |  | JiangHo | 16h |  |
| 122 | 1.5.5.4 | **Implement FISH Query Functionality** |  | 12d | 2006-10-03 | 2006-10-19 | 117 |  | 0d |  |  | 88h |  |
| 123 | 1.5.5.4.1 | Implement FISH Query GUI |  | 5d | 2006-10-03 | 2006-10-19 |  |  | 0d |  | RossoK | 40h |  |
| 124 | 1.3.3.5.3 | Implement Middle Tier code to support FISH |  | 8d | 2006-09-21 | 2006-10-03 |  |  | 0d |  |  | 64h |  |
| 125 | 1.5.5.4.3 | MileStone: Middle-tier for FISH completed | milestone | 0d | 2006-10-03 | 2006-10-03 | 124 |  | 1d | 0d |  |  |  |
| 126 | 1.5.5.4.4 | Port existing data portal FISH functionality |  | 4d | 2006-10-03 | 2006-10-18 | 125 |  | 1d |  | RossoK | 32h |  |
| 127 | 1.5.5.4.5 | Populate FISH Database tables |  | 2d | 2006-10-03 | 2006-10-05 |  |  | 10d |  | JiangHo | 16h |  |
| 128 | 1.5.5.5 | **Implement IHC Query Functionality** |  | 7.82d | 2006-10-03 | 2006-10-13 | 117 |  | 4.18d | 0d |  | 88h |  |
| 129 | 1.5.5.5.1 | Implement IHC Query GUI |  | 5d | 2006-10-03 | 2006-10-10 |  |  | 7d |  | LandyR | 40h |  |
| 130 | 1.3.3.5.5 | Implement Middle Tier Code to support IHC |  | 8d | 2006-10-03 | 2006-10-13 |  |  | 1.18d | 0d |  | 64h |  |
| 131 | 1.5.5.5.3 | MileStone: Middle-tier for IHC completed | milestone | 0d | 2006-10-13 | 2006-10-13 | 130 |  | 3d |  |  |  |  |
| 132 | 1.5.5.5.4 | Port existing data portal IHC functionality |  | 4d | 2006-10-03 | 2006-10-09 | 117 |  | 8d |  | ZhangD | 32h |  |
| 133 | 1.5.5.5.5 | Populate IHC Database tables |  | 2d | 2006-10-03 | 2006-10-05 |  |  | 10d |  | JiangHo | 16h |  |

| ID | WBS | Task | Type | Duration | Start | Finish | Predecessors | Total slack | Free slack | Resources | Work |
| --- | --- | --- | --- | --- | --- | --- | --- | --- | --- | --- | --- |
| 134 | 1.5.5.6 | **Implement P53 Query Functionality** |  | 5d | 2006-10-19 | 2006-10-26 | 122 | 0d |  |  | 88h |
| 135 | 1.5.5.6.1 | Implement P53 Query GUI |  | 5d | 2006-10-19 | 2006-10-26 |  | 0d |  | RossoK | 40h |
| 136 | 1.3.3.5.7 | Implement Middle Tier Code to support P53 |  | 4d | 2006-10-13 | 2006-10-19 |  | 1.18d | 0.18d |  | 32h |
| 137 | 1.5.5.6.3 | MileStone: Middle-tier for P53 completed | milestone | 0d | 2006-10-19 | 2006-10-19 | 136 | 1d | 0d |  |  |
| 138 | 1.5.5.6.4 | Port existing data portal P53 functionality |  | 4d | 2006-10-19 | 2006-10-25 | 137 | 1d |  | ZhangD | 32h |
| 139 | 1.5.5.6.5 | Populate P53 Database tables |  | 2d | 2006-10-19 | 2006-10-23 |  | 3d |  | JiangHo | 16h |
| 140 | 1.5.5.7 | **Implement Gene Expression Query Functionality** |  | 5d | 2006-10-13 | 2006-10-20 | 128 | 4.18d | 0d |  | 88h |
| 141 | 1.5.5.7.1 | Implement GE Query GUI |  | 5d | 2006-10-13 | 2006-10-20 |  | 3d |  | LandyR | 40h |
| 142 | 1.3.3.5.9 | Implement Middle Tier Code to support GE |  | 8d | 2006-10-03 | 2006-10-13 |  | 0d |  |  | 64h |
| 143 | 1.5.5.7.3 | MileStone: Middle-tier for GE completed | milestone | 0d | 2006-10-13 | 2006-10-13 | 142 | 4d | 0d |  |  |
| 144 | 1.5.5.7.4 | Port existing data portal gene expression functionality |  | 4d | 2006-10-13 | 2006-10-19 | 143 | 4d |  | ZhangD | 32h |
| 145 | 1.5.5.7.5 | Populate Gene Expression Database tables |  | 2d | 2006-10-13 | 2006-10-17 |  | 6d |  | JiangHo | 16h |
| 146 | 1.5.5.8 | **Test** |  | 9.18d | 2006-10-20 | 2006-11-02 | 140 | 0d |  |  | 72h |
| 147 | 1.5.5.8.1 | Unit Test |  | 4d | 2006-10-20 | 2006-10-26 |  | 4d |  | HarrisMA | 32h |
| 148 | 1.5.5.8.2 | Integration Test (Dev) |  | 5d | 2006-10-26 | 2006-11-02 | 117, 122, 128, 134, 140 | 0d |  | LongY | 40h |
| 149 | 1.5.5.8.3 | Milestone: Test Fixes on Dev | milestone | 0d | 2006-11-02 | 2006-11-02 | 148 | 0d |  |  |  |
| 150 | 1.5.6 | **Iteration 4 - Integration of the Integrated Data displays** |  | 25.67d | 2006-11-02 | 2006-12-08 | 109 | 0d |  |  | 200h |
| 151 | 1.5.6.1 | **Correlation Displays** |  | 16.67d | 2006-11-02 | 2006-11-27 |  | 0d |  |  | 128h |
| 152 | 1.5.6.1.1 | Analyis server enhancement to support correlation |  | 3d | 2006-11-02 | 2006-11-07 |  | 13.67d |  | HarrisMA; LiuH | 48h |
| 153 | 1.5.6.1.2 | GUI display of correlation |  | 16.67d | 2006-11-02 | 2006-11-27 |  | 0d |  | HarrisMA; RossoK [30%] | 80h |
| 154 | 1.5.6.2 | **Test** |  | 9d | 2006-11-27 | 2006-12-08 | 151 | 0d |  |  | 72h |
| 155 | 1.5.6.2.1 | Unit Test |  | 4d | 2006-11-27 | 2006-12-01 |  | 0d |  | HarrisMA | 32h |
| 156 | 1.5.6.2.2 | Integration Test (Dev) |  | 5d | 2006-12-01 | 2006-12-08 | 155 | 0d |  | LongY | 40h |
| 157 | 1.5.6.2.3 | Milestone: Test Fixes on Dev | milestone | 0d | 2006-11-27 | 2006-11-27 |  | 9d |  |  |  |

| ID | WBS | Task | Duration | Start | Finish | Predecessors | Total slack | Resources | Work |
| --- | --- | --- | --- | --- | --- | --- | --- | --- | --- |
| 158 | 1.5.7 | **Transition** | 5d | 2006-12-08 | 2006-12-15 | 154 | 0d |  | 128h |
| 159 | 1.5.7.1 | Modify deployment scripts | 1d | 2006-12-08 | 2006-12-11 |  | 4d | HarrisMA | 8h |
| 160 | 1.5.7.2 | Deployment to QA | 1d | 2006-12-08 | 2006-12-11 |  | 4d | WuYe | 8h |
| 161 | 1.5.7.3 | Testing on QA | 5d | 2006-12-08 | 2006-12-15 |  | 0d | LongY | 40h |
| 162 | 1.5.7.4 | Deployment to Staging | 2d | 2006-12-08 | 2006-12-12 |  | 3d | Systems | 16h |
| 163 | 1.5.7.5 | Testing on Staging | 3d | 2006-12-08 | 2006-12-13 |  | 2d | LongY | 24h |
| 164 | 1.5.7.6 | Deployment to Production | 2d | 2006-12-08 | 2006-12-12 |  | 3d | Systems | 16h |
| 165 | 1.5.7.7 | Testing on Production | 2d | 2006-12-08 | 2006-12-12 |  | 3d | LongY | 16h |
