# Rembrandt1.5Schedule_04-26-2006

Schedule from MS Project, 2006-06-05 to 2006-11-07, A marks actual dates.
SAIC

## Calendars

- Standard: Mon-Fri 08:00-12:00, 13:00-17:00; Sat-Sun off.

## Resources

| Resource |
| --- |
| JiangHo |
| GuruswamiS |
| SahniH |
| ZhangD |
| BhatturR |
| MadhavaS |
| LiuH |
| LandyR |
| RossoK |
| HarrisMA |
| LongY |
| BasuA |

## Schedule

| ID | WBS | Task | Type | Duration | Start | Finish | Predecessors | Complete | Remaining | Total slack | Free slack | Constraint | Resources | Work | Actual work | Text1 |
| --- | --- | --- | --- | --- | --- | --- | --- | --- | --- | --- | --- | --- | --- | --- | --- | --- |
| 1 | 1 | **Rembrandt 1.5 Release** |  | 112d | 2006-06-05 A | 2006-11-07 |  | 4% | 107.2d | 0d |  |  |  | 2980h | 111.2h |  |
| 2 | 1.1 | **Rembrandt 1.5 Bug Fixes/ Feature Enchacements** |  | 112d | 2006-06-05 A | 2006-11-07 |  | 4% | 107.2d | 0d |  |  |  | 2980h | 111.2h |  |
| 3 | 1.1.1 | **Project Management and Control** |  | 80d | 2006-06-07 | 2006-09-26 |  |  |  | 30d |  |  |  | 1280h |  |  |
| 4 | 1.1.1.1 | Project Management |  | 80d | 2006-06-07 | 2006-09-26 |  |  |  | 30d |  | start no earlier than 2006-06-07 | GuruswamiS | 640h |  |  |
| 5 | 1.1.1.2 | Project Control |  | 80d | 2006-06-07 | 2006-09-26 |  |  |  | 30d |  | start no earlier than 2006-06-07 | GuruswamiS | 640h |  |  |
| 6 | 1.1.2 | **Inception Phase** |  | 24d | 2006-06-05 A | 2006-07-06 |  | 3% | 23.35d | 88d |  |  |  | 208h |  |  |
| 7 | 1.1.2.1 | **Requirements Gathering** |  | 5d | 2006-06-07 A | 2006-06-13 |  | 18% | 4.1d | 0d |  |  |  |  |  |  |
| 8 | 1.1.2.1.1 | Determine General Requirements |  | 1d | 2006-06-07 | 2006-06-07 |  |  |  | 0.9d | 0d | start no earlier than 2006-06-07 |  |  |  |  |
| 9 | 1.1.2.1.2 | Determine Basic Use Cases |  | 3d | 2006-06-08 | 2006-06-12 | 8 |  |  | 0.9d | 0d | start no earlier than 2006-06-07 |  |  |  |  |
| 10 | 1.1.2.1.3 | Prioritize Use Cases |  | 1d | 2006-06-13 A | 2006-06-13 | 8, 9 | 90% | 0.1d | 0d |  | start no earlier than 2006-06-05 |  |  |  |  |
| 11 | 1.1.2.2 | **Documentation** |  | 24d | 2006-06-05 A | 2006-07-06 |  |  | 24d | 88d |  |  |  | 208h |  |  |
| 12 | 1.1.2.2.1 | Draft Project Plan |  | 5d | 2006-06-05 | 2006-06-09 |  |  |  | 107d |  | start no earlier than 2006-06-05 | SahniH | 40h |  |  |
| 13 | 1.1.2.2.2 | Add Feature Requests/Bugs into TestTrack |  | 2d | 2006-06-05 A | 2006-06-06 |  |  | 2d | 5d |  | start no earlier than 2006-06-05 | LongY |  |  |  |
| 14 | 1.1.2.2.3 | Draft Requirements Specification Document |  | 3d | 2006-06-14 | 2006-06-16 | 10, 13 |  |  | 0d |  |  | SahniH | 24h |  |  |
| 15 | 1.1.2.2.4 | Draft Design Document |  | 4d | 2006-06-19 | 2006-06-22 | 14 |  |  | 98d |  |  | SahniH | 32h |  |  |
| 16 | 1.1.2.2.5 | Draft Test Plan |  | 4d | 2006-06-19 | 2006-06-22 | 14 |  |  | 88d | 0d |  | LongY | 32h |  |  |
| 17 | 1.1.2.2.6 | Draft Test Cases |  | 10d | 2006-06-23 | 2006-07-06 | 16 |  |  | 88d |  |  | LongY | 80h |  |  |
| 18 | 1.1.2.3 | Milestone: General Requirements Captured & Priortized | milestone | 0d | 2006-06-16 | 2006-06-16 | 14 |  |  | 102d |  |  | MadhavaS |  |  |  |
| 19 | 1.1.3 | **Elaboration Phase** |  | 102d | 2006-06-19 A | 2006-11-07 |  | 8% | 94.07d | 0d |  |  |  | 1492h | 111.2h |  |
| 20 | 1.1.3.1 | **Itreration 1 (Bug Fixes)** |  | 25d | 2006-06-19 A | 2006-07-21 | 14 | 33% | 16.63d | 2d | 0d |  |  | 324h | 103.2h |  |
| 21 | 1.1.3.1.1 | **design** |  | 4d | 2006-06-19 | 2006-06-22 |  |  |  | 2d |  |  |  | 48h |  |  |
| 22 | 1.1.3.1.1.1 | List Management |  | 2d | 2006-06-19 | 2006-06-20 |  |  |  | 2d | 0d |  | RossoK | 16h |  |  |
| 23 | 1.1.3.1.1.2 | Add option to download data in BRB tool format |  | 4d | 2006-06-19 | 2006-06-22 |  |  |  | 21d |  |  | LiuH | 32h |  |  |
| 24 | 1.1.3.1.2 | **Code** |  | 16d | 2006-06-19 A | 2006-07-10 |  | 51% | 7.79d | 2d | 0d |  |  | 220h | 103.2h |  |
| 25 | 1.1.3.1.2.1 | Fix bug associated with Advance Option |  | 3d | 2006-06-21 | 2006-06-23 | 22 |  |  | 2d | 0d | start no earlier than 2005-05-16 | RossoK | 24h |  |  |
| 26 | 1.1.3.1.2.2 | Allow multiple disease selection for advanced queries |  | 3d | 2006-06-26 A | 2006-06-28 | 25 | 80% | 0.6d | 10d |  |  | RossoK | 24h | 19.2h |  |
| 27 | 1.1.3.1.2.3 | Look into save queries as they do not seem to be saving properly |  | 2d | 2006-06-19 A | 2006-06-20 A |  | 100% |  |  |  | start no earlier than 2005-04-18 | SahniH | 16h | 16h |  |
| 28 | 1.1.3.1.2.4 | Refactor cache to use the caIntegrator commons cache |  | 2d | 2006-06-21 A | 2006-06-22 A | 27 | 100% |  |  |  |  | SahniH | 16h | 16h |  |
| 29 | 1.1.3.1.2.5 | Refactor Analysis server client manager |  | 3d | 2006-06-23 A | 2006-06-27 A | 28 | 100% |  |  |  |  | HarrisMA | 24h | 24h |  |
| 30 | 1.1.3.1.2.6 | Investigate sample upload using JC’s file |  | 1d | 2006-06-19 A | 2006-06-19 A |  | 100% |  |  |  | start no earlier than 2006-04-10 | LongY | 8h | 8h | Low |
| 31 | 1.1.3.1.2.7 | Change Search Pathway to caBIO v3.1 |  | 5d | 2006-06-19 A | 2006-06-23 A |  | 100% |  |  |  | start no earlier than 2005-05-16 | ZhangD [50%] | 20h | 20h |  |
| 32 | 1.1.3.1.2.8 | Abstracting common code UI to app. Commons module |  | 3d | 2006-06-26 | 2006-06-28 | 25 |  |  | 2d | 0d |  | LandyR | 24h |  |  |
| 33 | 1.1.3.1.2.9 | List Management Implementation |  | 8d | 2006-06-29 | 2006-07-10 | 32 |  |  | 2d |  | start no earlier than 2005-05-23 | RossoK [60%]; LandyR [40%] | 64h |  |  |
| 34 | 1.1.3.1.3 | Deployment to Dev | milestone | 0d | 2006-07-10 | 2006-07-10 | 24 |  |  | 11d |  |  |  |  |  |  |

| ID | WBS | Task | Type | Duration | Start | Finish | Predecessors | Complete | Remaining | Total slack | Free slack | Resources | Work | Actual work | Text1 |
| --- | --- | --- | --- | --- | --- | --- | --- | --- | --- | --- | --- | --- | --- | --- | --- |
| 35 | 1.1.3.1.4 | **Test** |  | 8d | 2006-07-11 | 2006-07-20 |  |  |  | 2d |  |  | 40h |  |  |
| 36 | 1.1.3.1.4.1 | Unit Test |  | 3d | 2006-07-11 | 2006-07-13 | 24 |  |  | 2d | 0d |  |  |  |  |
| 37 | 1.1.3.1.4.2 | Integration Test (Dev) |  | 5d | 2006-07-14 | 2006-07-20 | 36 |  |  | 2d | 0d | LongY | 40h |  |  |
| 38 | 1.1.3.1.5 | Milestone: Test Build on Dev Completed | milestone | 0d | 2006-07-20 | 2006-07-20 | 37 |  |  | 3d |  |  |  |  |  |
| 39 | 1.1.3.1.6 | **MileStone Draft Documents:** |  | 1d | 2006-07-20 | 2006-07-21 | 37 |  |  | 2d |  |  | 16h |  |  |
| 40 | 1.1.3.1.6.1 | Draft Iteration 1 Design Doc Completed | milestone | 0d | 2006-07-20 | 2006-07-20 |  |  |  | 3d |  | SahniH |  |  |  |
| 41 | 1.1.3.1.6.2 | Draft Iteration 1 Test Cases Completed |  | 1d | 2006-07-21 | 2006-07-21 |  |  |  | 2d |  | LongY | 8h |  |  |
| 42 | 1.1.3.1.6.3 | Draft Test Plan Completed |  | 1d | 2006-07-21 | 2006-07-21 |  |  |  | 2d |  | LongY | 8h |  |  |
| 43 | 1.1.3.2 | **Itreration 2 (Enchanced Functionality)** |  | 27d | 2006-07-24 A | 2006-08-29 | 20 | 2% | 26.47d | 0d |  |  | 316h | 8h |  |
| 44 | 1.1.3.2.1 | **code** |  | 16d | 2006-07-24 A | 2006-08-14 |  | 3% | 15.56d | 0d |  |  | 268h | 8h |  |
| 45 | 1.1.3.2.1.1 | **Advanced Search/Reports** |  | 14d | 2006-07-24 | 2006-08-10 |  |  |  | 2d |  |  | 140h |  |  |
| 46 | 1.1.3.2.1.1.1 | Allow persistence of complex queries |  | 1w | 2006-07-24 | 2006-07-28 |  |  |  | 11d |  | SahniH [50%] | 20h |  | Med |
| 47 | 1.1.3.2.1.1.2 | Allow users to save samples where one or more rows are highlighted. |  | 6d | 2006-07-24 | 2006-07-31 | 37 |  |  | 2d | 0d | LandyR | 48h |  |  |
| 48 | 1.1.3.2.1.1.3 | “Check All” should select All items on All pages, not just the current page |  | 5d | 2006-08-01 | 2006-08-07 | 47 |  |  | 2d | 0d | LandyR | 40h |  |  |
| 49 | 1.1.3.2.1.1.4 | when viewing copy number report, add button toggle that lets user see the clinical report of the data |  | 3d | 2006-08-08 | 2006-08-10 | 48 |  |  | 2d |  | LandyR | 24h |  |  |
| 50 | 1.1.3.2.1.1.5 | Bug Fix: filter for p-value on the result page |  | 1d | 2006-07-24 | 2006-07-24 | 33 |  |  | 15d |  | LandyR | 8h |  |  |
| 51 | 1.1.3.2.1.2 | **HOA** |  | 9d | 2006-07-24 A | 2006-08-03 | 33 | 14% | 7.71d | 7d |  |  | 56h | 8h |  |
| 52 | 1.1.3.2.1.2.1 | Make the Select Samples a single click for PCA |  | 1d | 2006-07-24 | 2006-07-24 | 33 |  |  | 15d |  | RossoK | 8h |  |  |
| 53 | 1.1.3.2.1.2.2 | Allow selection of groups by double click (same feature through out the application) |  | 1d | 2006-07-27 A | 2006-07-27 A | 52 | 100% |  |  |  | RossoK | 8h | 8h |  |
| 54 | 1.1.3.2.1.2.3 | Allow option to remove colors and shapes on view “raw” graphs |  | 3d | 2006-07-28 | 2006-08-01 | 53 |  |  | 0d |  | LandyR | 24h |  |  |
| 55 | 1.1.3.2.1.2.4 | Normal samples should not display survival length shapes, but be designated as Normal |  | 2d | 2006-08-02 | 2006-08-03 | 54 |  |  | 0d |  | LandyR | 16h |  |  |
| 56 | 1.1.3.2.1.3 | **Webgenome** |  | 7d | 2006-08-04 | 2006-08-14 | 55 |  |  | 0d |  |  | 72h |  |  |
| 57 | 1.1.3.2.1.3.1 | API Design for providing Webgenome with LOH data |  | 2d | 2006-08-04 | 2006-08-07 |  |  |  | 0d |  | BhatturR | 16h |  |  |
| 58 | 1.1.3.2.1.3.2 | Implement API that provides Webgenome with LOH data |  | 1w | 2006-08-08 | 2006-08-14 | 57 |  |  | 0d |  | BhatturR | 40h |  |  |
| 59 | 1.1.3.2.1.3.3 | Hardware configuration & HLA for Webgenome |  | 2d | 2006-08-04 | 2006-08-07 |  |  |  | 5d |  | HarrisMA | 16h |  |  |
| 60 | 1.1.3.2.2 | Deployment to Dev | milestone | 0d | 2006-08-14 | 2006-08-14 | 44 |  |  | 0d |  |  |  |  |  |

| ID | WBS | Task | Type | Duration | Start | Finish | Predecessors | Total slack | Free slack | Constraint | Resources | Work | Text1 |
| --- | --- | --- | --- | --- | --- | --- | --- | --- | --- | --- | --- | --- | --- |
| 61 | 1.1.3.2.3 | **Test** |  | 11d | 2006-08-15 | 2006-08-29 |  | 0d |  |  |  | 48h |  |
| 62 | 1.1.3.2.3.1 | Unit Test |  | 4d | 2006-08-15 | 2006-08-18 | 60 | 7d |  |  |  |  |  |
| 63 | 1.1.3.2.3.2 | Integration Test (Dev) |  | 11d | 2006-08-15 | 2006-08-29 | 60 | 0d |  |  | LongY | 48h |  |
| 64 | 1.1.3.2.4 | Milestone: Test on Dev Completed | milestone | 0d | 2006-08-29 | 2006-08-29 | 61 | 0d |  |  | LongY |  |  |
| 65 | 1.1.3.2.5 | **MileStone Draft Documents:** |  | 0d | 2006-08-29 | 2006-08-29 | 61 | 0d |  |  |  |  |  |
| 66 | 1.1.3.2.5.1 | Draft Iteration 1 Test Cases Completed | milestone | 0d | 2006-08-29 | 2006-08-29 |  | 0d |  |  | LongY |  |  |
| 67 | 1.1.3.3 | **Iteration 3: (New Features)** |  | 29d | 2006-08-30 | 2006-10-09 | 43 | 0d |  |  |  | 660h |  |
| 68 | 1.1.3.3.1 | **Design** |  | 10d | 2006-08-30 | 2006-09-12 |  | 0d |  |  |  | 120h |  |
| 69 | 1.1.3.3.1.1 | ANOVA multi-group comparison to class comparison |  | 3d | 2006-08-30 | 2006-09-01 | 60 | 26d |  |  | LiuH | 24h |  |
| 70 | 1.1.3.3.1.2 | CDNA Data for HLA, data processsing |  | 2w | 2006-08-30 | 2006-09-12 | 60 | 0d |  | finish no earlier than 2005-03-11 | LiuH | 80h |  |
| 71 | 1.1.3.3.1.3 | Incorporate KEGG metabolic pathway; search & retrieval |  | 5d | 2006-08-30 | 2006-09-05 |  | 24d |  |  | ZhangD | 16h |  |
| 72 | 1.1.3.3.2 | **Code** |  | 19d | 2006-08-30 | 2006-09-25 |  | 0d |  |  |  | 444h |  |
| 73 | 1.1.3.3.2.1 | Implementation of persistence of complex queries |  | 3d | 2006-08-30 | 2006-09-01 | 60 | 9d | 0d |  | SahniH | 24h |  |
| 74 | 1.1.3.3.2.2 | persisting user lists |  | 4d | 2006-08-30 | 2006-09-04 | 55 | 15d |  |  | LandyR | 32h |  |
| 75 | 1.1.3.3.2.3 | **Implement analysis server modules (ANOVA) for multi-group comparisons & CDNA data** |  | 6d | 2006-09-13 | 2006-09-20 | 70 | 0d |  |  |  | 112h |  |
| 76 | 1.1.3.3.2.3.1 | UI, DTO and middleware changes |  | 4d | 2006-09-13 | 2006-09-18 |  | 2d |  |  | ZhangD | 32h |  |
| 77 | 1.1.3.3.2.3.2 | R Server module implementation |  | 4d | 2006-09-13 | 2006-09-18 |  | 2d |  |  | LiuH | 32h |  |
| 78 | 1.1.3.3.2.3.3 | Analysis server implementation |  | 6d | 2006-09-13 | 2006-09-20 |  | 0d |  |  | GuruswamiS | 48h |  |
| 79 | 1.1.3.3.2.4 | Add option to download data in BRB tool format |  | 10d | 2006-08-30 | 2006-09-12 | 64 | 2d | 0d |  | LandyR | 80h |  |
| 80 | 1.1.3.3.2.5 | Implement class comparisons for disease groups |  | 5d | 2006-09-04 | 2006-09-08 | 73 | 9d | 0d |  | SahniH | 40h |  |
| 81 | 1.1.3.3.2.6 | Add compound request capability for HLA in the analysis server |  | 3d | 2006-09-21 | 2006-09-25 | 75 | 0d |  |  | HarrisMA | 24h |  |
| 82 | 1.1.3.3.2.7 | Implement search & retrieval of KEGG metabolic pathway data |  | 8d | 2006-08-30 | 2006-09-08 | 60 | 11d | 0d |  | ZhangD; JiangHo [50%] | 60h |  |
| 83 | 1.1.3.3.2.8 | Externalize properties and modify build scripts |  | 2d | 2006-09-11 | 2006-09-12 | 80 | 9d |  |  | SahniH | 16h |  |
| 84 | 1.1.3.3.2.9 | Allow all queries to be filtered by Institutions |  | 3d | 2006-09-13 | 2006-09-15 | 79 | 2d | 0d | start no earlier than 2006-04-10 | LandyR | 24h | Low/Med |
| 85 | 1.1.3.3.2.10 | Add Disease Groups for KM plots |  | 3d | 2006-09-18 | 2006-09-20 | 84 | 2d | 0d |  | LandyR | 24h |  |
| 86 | 1.1.3.3.2.11 | Bug Fix: Mouse over on bar graph should display p-value instead of foldchange |  | 1d | 2006-09-21 | 2006-09-21 | 85 | 2d |  |  | LandyR | 8h |  |

| ID | WBS | Task | Type | Duration | Start | Finish | Predecessors | Total slack | Free slack | Constraint | Resources | Work |
| --- | --- | --- | --- | --- | --- | --- | --- | --- | --- | --- | --- | --- |
| 87 | 1.1.3.3.3 | **Data Refresh** |  | 6d | 2006-09-11 | 2006-09-18 | 82 | 15d |  |  |  | 48h |
| 88 | 1.1.3.3.3.1 | Create R binary file |  | 3d | 2006-09-11 | 2006-09-13 |  | 15d | 0d |  | LiuH | 24h |
| 89 | 1.1.3.3.3.2 | Database refresh |  | 3d | 2006-09-14 | 2006-09-18 | 88 | 15d |  |  | JiangHo | 24h |
| 90 | 1.1.3.3.4 | **Test** |  | 10d | 2006-09-26 | 2006-10-09 |  | 0d |  |  |  | 48h |
| 91 | 1.1.3.3.4.1 | Unit Test (per function) |  | 4d | 2006-09-26 | 2006-09-29 | 72 | 0d |  |  |  |  |
| 92 | 1.1.3.3.4.2 | Integration Test (Dev Server) |  | 6d | 2006-10-02 | 2006-10-09 | 91 | 0d |  |  | LongY | 48h |
| 93 | 1.1.3.4 | Milestone: Iteration 3 complete | milestone | 0d | 2006-10-09 | 2006-10-09 | 90 | 0d |  |  |  |  |
| 94 | 1.1.3.5 | **MileStone Draft Documents:** |  | 0d | 2006-10-09 | 2006-10-09 |  | 21d |  |  |  |  |
| 95 | 1.1.3.5.1 | Draft Iteration 3 Design Doc Completed | milestone | 0d | 2006-10-09 | 2006-10-09 | 90 | 21d |  |  | BasuA |  |
| 96 | 1.1.3.5.2 | Draft Iteration 3 Test Cases Completed | milestone | 0d | 2006-10-09 | 2006-10-09 | 90 | 21d |  |  | BasuA |  |
| 97 | 1.1.3.6 | **Transition Phase** |  | 21d | 2006-10-10 | 2006-11-07 | 67 | 0d |  |  |  | 192h |
| 98 | 1.1.3.6.1 | **QA** |  | 3d | 2006-10-10 | 2006-10-12 |  | 18d |  |  |  | 24h |
| 99 | 1.1.3.6.1.1 | Finalize Testplan |  | 2d | 2006-10-10 | 2006-10-11 | 93 | 18d | 0d |  | LongY | 16h |
| 100 | 1.1.3.6.1.2 | Finalize Test Cases |  | 1d | 2006-10-12 | 2006-10-12 | 99 | 18d |  |  | LongY | 8h |
| 101 | 1.1.3.6.2 | **Deploy** |  | 21d | 2006-10-10 | 2006-11-07 |  | 0d |  |  |  | 168h |
| 102 | 1.1.3.6.2.1 | **QA Server Deployment** |  | 12d | 2006-10-10 | 2006-10-25 |  | 0d |  |  |  | 96h |
| 103 | 1.1.3.6.2.1.1 | QA Testing |  | 12d | 2006-10-10 | 2006-10-25 | 93 | 0d |  | start no earlier than 2005-06-28 | LongY | 96h |
| 104 | 1.1.3.6.2.2 | **Staging Server Deployment** |  | 8d | 2006-10-26 | 2006-11-06 |  | 0d |  |  |  | 64h |
| 105 | 1.1.3.6.2.2.1 | Staging Testing |  | 8d | 2006-10-26 | 2006-11-06 | 103 | 0d |  |  | LongY | 64h |
| 106 | 1.1.3.6.2.3 | **Production Server Deployment** |  | 1d | 2006-11-07 | 2006-11-07 |  | 0d |  |  |  | 8h |
| 107 | 1.1.3.6.2.3.1 | Production Verification |  | 1d | 2006-11-07 | 2006-11-07 | 105 | 0d |  | start no earlier than 2005-06-13 | LongY | 8h |
| 108 | 1.1.3.7 | Milestone: Release complete | milestone | 0d | 2006-11-07 | 2006-11-07 | 107 | 0d |  |  |  |  |
| 109 | 1.1.3.8 | **MileStone Draft Documents:** |  | 0d | 2006-11-07 | 2006-11-07 |  | 0d |  |  |  |  |
| 110 | 1.1.3.8.1 | Draft Design Doc Completed | milestone | 0d | 2006-11-07 | 2006-11-07 | 107 | 0d |  |  | SahniH |  |
| 111 | 1.1.3.8.2 | Draft Test Cases Completed | milestone | 0d | 2006-11-07 | 2006-11-07 | 107 | 0d |  |  | LongY |  |
| 112 | 1.1.3.8.3 | Draft Test Plan Completed | milestone | 0d | 2006-11-07 | 2006-11-07 | 107 | 0d |  |  | LongY |  |

| ID | WBS | Task | Type | Duration | Start | Finish | Predecessors | Total slack | Constraint | Resources | Text1 |
| --- | --- | --- | --- | --- | --- | --- | --- | --- | --- | --- | --- |
| 113 | 1.2 | **Rembrandt Post 1.5 Features** |  | 0d | 2006-11-07 | 2006-11-07 | 2 | 0d |  |  |  |
| 114 | 1.2.1 | Use the new dynamic tables for the reports so that we don’t have pagination | milestone | 0d | 2006-11-07 | 2006-11-07 |  | 0d | start no earlier than 2006-04-10 |  | Med |
| 115 | 1.2.2 | **Add new caCORE GO Browser** |  | 0d | 2006-11-07 | 2006-11-07 | 24 | 0d |  |  |  |
| 116 | 1.2.2.1 | Add new caCORE GO Browser | milestone | 0d | 2006-11-07 | 2006-11-07 | 82 | 0d |  | ZhangD |  |
| 117 | 1.2.3 | **HOA** |  | 0d | 2006-11-07 | 2006-11-07 |  | 0d |  |  |  |
| 118 | 1.2.3.1 | Add PAM to HOA | milestone | 0d | 2006-11-07 | 2006-11-07 |  | 0d | start no earlier than 2006-04-10 |  | low |
| 119 | 1.2.3.2 | For every custom sample group, create an NOT group that excludes the selected samples. Need to find a good name for this feature. | milestone | 0d | 2006-11-07 | 2006-11-07 |  | 0d | start no earlier than 2006-04-10 |  | Med |
| 120 | 1.2.3.3 | Implement “Cox model” to identify most significantly expressed genes associated with survival | milestone | 0d | 2006-11-07 | 2006-11-07 |  | 0d | start no earlier than 2006-04-10 |  | Low |
| 121 | 1.2.4 | **PCA** |  | 0d | 2006-11-07 | 2006-11-07 |  | 0d |  |  |  |
| 122 | 1.2.4.1 | Look into providing the 3D PCA plot (visualize only) | milestone | 0d | 2006-11-07 | 2006-11-07 |  | 0d | start no earlier than 2006-04-10 |  | Low/Med |
| 123 | 1.2.4.2 | Allow users to color by custom groups with overlapping samples in a neutral color. (Shapes are fine as they are.) | milestone | 0d | 2006-11-07 | 2006-11-07 |  | 0d | start no earlier than 2006-04-10 |  | Med |
| 124 | 1.2.5 | **Advance Queries** |  | 0d | 2006-11-07 | 2006-11-07 |  | 0d |  |  |  |
| 125 | 1.2.5.1 | CSV download does not work for large datasets where the number of samples is greater than 256 | milestone | 0d | 2006-11-07 | 2006-11-07 |  | 0d | start no earlier than 2006-04-10 |  | Low |
| 126 | 1.2.6 | **Misc. Features** |  | 0d | 2006-11-07 | 2006-11-07 |  | 0d |  |  |  |
| 127 | 1.2.6.1 | Add class comparison analysis for copy number data | milestone | 0d | 2006-11-07 | 2006-11-07 |  | 0d | start no earlier than 2006-04-10 |  | Low |
| 128 | 1.2.6.2 | Enhance hierarchical clustering report to allow for selection of samples/reporters from the graphic | milestone | 0d | 2006-11-07 | 2006-11-07 |  | 0d | start no earlier than 2006-04-10 |  | Low |
| 129 | 1.2.6.3 | Change the way hierarchical clustering is displayed so that the image is rendered by the app and not by R | milestone | 0d | 2006-11-07 | 2006-11-07 |  | 0d | start no earlier than 2006-04-10 |  | Low |
| 130 | 1.2.6.4 | Sharing queries/sample lists/etc among users | milestone | 0d | 2006-11-07 | 2006-11-07 |  | 0d | start no earlier than 2006-04-10 |  | Med |
| 131 | 1.2.6.5 | Look into added functionality of sending emails to user when a query is finished for inbox. This may be out of scope until we have many more samples. | milestone | 0d | 2006-11-07 | 2006-11-07 |  | 0d | start no earlier than 2006-04-10 |  | Med |
